# GestionProyecto

Schedule from MS Project, 2013-03-22 to 2014-02-27, costs in €.
Hewlett-Packard

## Calendars

- Estándar: Mon-Fri 09:00-13:00, 15:00-19:00; Sat-Sun off.

## Resources

| Resource | Rate |
| --- | --- |
| DIRECTOR PROYECTO | 60 |
| INGENIERO AGRONOMO | 48 |
| EXPERTO GIS | 47 |
| ECONOMISTA | 45 |
| SOCIOLOGO | 45 |
| INGENIERO EN MEDIOAMBIENTE | 45 |
| ADMINISTRATIVO | 30 |
| TECNICOS DE APOYO | 35 |
| SOCIÓLOGO |  |
| INGENIERO AGRÓNOMO |  |
| EXPERTO EN GIS |  |

## Schedule

| ID | WBS | Task | Type | Duration | Start | Finish | Predecessors | Resources | Work | Cost |
| --- | --- | --- | --- | --- | --- | --- | --- | --- | --- | --- |
| 1 | 1 | **1 TOTAL PROYECTO** |  | 242d | 2013-03-22 | 2014-02-24 |  |  | 7447.6h | 263,654.8 |
| 2 | 1.1 | **1.1 PREPARACION PARA LA FORMULACION** |  | 31d | 2013-03-22 | 2013-05-03 |  |  | 728.4h | 31,446 |
| 3 | 1.1.1 | 1.1.1 INICIO | milestone, manual | 0d | 2013-03-22 | 2013-03-22 |  | DIRECTOR PROYECTO |  |  |
| 4 | 1.1.2 | 1.1.2 TERMINOS DE REFERENCIA | manual | 10d | 2013-03-22 | 2013-04-04 | 3 | DIRECTOR PROYECTO [25%]; INGENIERO AGRONOMO [25%]; ECONOMISTA [50%]; SOCIOLOGO [25%]; INGENIERO EN MEDIOAMBIENTE [25%] | 120h | 5,760 |
| 5 | 1.1.3 | 1.1.3 FINANCIACION | manual | 7d | 2013-03-22 | 2013-04-01 | 3 | DIRECTOR PROYECTO [15%]; INGENIERO AGRONOMO [25%]; ECONOMISTA [50%]; SOCIOLOGO [25%] | 64.4h | 3,066 |
| 6 | 1.1.4 | 1.1.4 COMITÉ DE COORDINACION | manual | 5d | 2013-03-22 | 2013-03-28 | 3 | DIRECTOR PROYECTO [25%] | 10h | 600 |
| 7 | 1.1.5 | 1.1.5 EQUIPO DE FORMULACION | manual | 15d | 2013-03-29 | 2013-04-18 | 4SS, 6 | DIRECTOR PROYECTO [25%]; ECONOMISTA [20%]; SOCIOLOGO [10%]; INGENIERO EN MEDIOAMBIENTE [10%]; INGENIERO AGRONOMO [10%]; ADMINISTRATIVO [10%] | 102h | 4,896 |
| 8 | 1.1.6 | 1.1.6 METODOLOGIA Y PLAN DE TRABAJO | manual | 10d | 2013-04-12 | 2013-04-25 | 7FS-5d, 5, 4, 6SS | INGENIERO AGRONOMO [50%]; DIRECTOR PROYECTO [50%]; ECONOMISTA; SOCIÓLOGO [50%]; INGENIERO EN MEDIOAMBIENTE [50%]; ADMINISTRATIVO [50%] | 280h | 10,920 |
| 9 | 1.1.7 | 1.1.7 DOC Nº1 | manual | 5d | 2013-04-26 | 2013-05-02 | 8 | DIRECTOR PROYECTO [50%]; ECONOMISTA [50%]; SOCIOLOGO [20%]; INGENIERO EN MEDIOAMBIENTE [20%]; INGENIERO AGRONOMO [20%]; ADMINISTRATIVO | 104h | 4,404 |
| 10 | 1.1.8 | 1.1.8 ENTREGA DOC Nº1 | milestone, manual | 0d | 2013-05-03 | 2013-05-03 | 9 | DIRECTOR PROYECTO [50%] |  |  |
| 11 | 1.1.9 | 1.1.9 SEMINARIO LANZ. POYECTO | manual | 1d | 2013-05-03 | 2013-05-03 | 10 | DIRECTOR PROYECTO; ECONOMISTA; SOCIOLOGO; INGENIERO EN MEDIOAMBIENTE; INGENIERO AGRÓNOMO; ADMINISTRATIVO | 48h | 1,800 |
| 12 | 1.2 | **1.2 ANALASIS Y DIAGNOSTICO** |  | 94d | 2013-05-06 | 2013-09-12 |  |  | 3981.6h | 114,556.8 |
| 13 | 1.2.1 | **1.2.1 ANALISIS ANTECEDENTES** |  | 15d | 2013-05-06 | 2013-05-24 | 11 |  | 315.2h | 14,088 |
| 14 | 1.2.1.1 | 1.2.1.1 POLITICAS Y PROGRAMAS | manual | 10d | 2013-05-06 | 2013-05-17 | 11 | DIRECTOR PROYECTO [20%]; INGENIERO AGRONOMO [50%]; ECONOMISTA [40%]; ADMINISTRATIVO [20%]; INGENIERO EN MEDIOAMBIENTE [20%] | 120h | 5,520 |
| 15 | 1.2.1.2 | 1.2.1.2 MARCO LEGAL | manual | 15d | 2013-05-06 | 2013-05-24 | 11 | DIRECTOR PROYECTO [20%]; INGENIERO AGRONOMO [20%]; ADMINISTRATIVO [50%]; ECONOMISTA [40%] | 156h | 6,552 |
| 16 | 1.2.1.3 | 1.2.1.3 BD EXISTENTE | manual | 7d | 2013-05-06 | 2013-05-14 | 11 | DIRECTOR PROYECTO [20%]; INGENIERO AGRONOMO [50%] | 39.2h | 2,016 |
| 17 | 1.2.2 | **1.2.2 ANALISIS AREA PROYECTO** |  | 80d | 2013-05-15 | 2013-09-03 | 11, 16 |  | 2124h | 53,796 |
| 18 | 1.2.2.1 | 1.2.2.1 INVENTARIO AMBIENAL | manual | 35d | 2013-05-15 | 2013-07-02 |  | INGENIERO EN MEDIOAMBIENTE; INGENIERO AGRONOMO [50%]; ECONOMISTA [40%]; ADMINISTRATIVO [20%]; EXPERTO EN GIS [50%] | 728h | 26,040 |
| 19 | 1.2.2.2 | 1.2.2.2 INFRAESTTRUCTURAS Y SERVIC | manual | 20d | 2013-07-03 | 2013-07-30 | 18 | INGENIERO AGRÓNOMO; SOCIÓLOGO [50%]; DIRECTOR PROYECTO [10%]; ADMINISTRATIVO [25%] | 296h | 2,160 |
| 20 | 1.2.2.3 | 1.2.2.3 ANALISIS DE SECTORES | manual | 25d | 2013-07-31 | 2013-09-03 | 14, 13, 15, 19 | DIRECTOR PROYECTO [20%]; ECONOMISTA; INGENIERO AGRONOMO [50%]; ADMINISTRATIVO [50%] | 440h | 19,200 |
| 21 | 1.2.2.4 | 1.2.2.4 ANALISIS POBLACIONAL | manual | 20d | 2013-05-15 | 2013-06-11 |  | SOCIÓLOGO; INGENIERO AGRONOMO [25%]; ADMINISTRATIVO [25%] | 240h | 3,120 |
| 22 | 1.2.2.5 | 1.2.2.5 SISTEMA TERRITORIAL INFO | manual | 21d | 2013-05-15 | 2013-06-12 | 16 | SOCIÓLOGO; INGENIERO AGRONOMO [25%]; ADMINISTRATIVO [25%]; EXPERTO EN GIS | 420h | 3,276 |
| 23 | 1.2.3 | **1.2.3 ANALISIS AGENE Y PARTICIPACION** |  | 82d | 2013-05-22 | 2013-09-12 |  |  | 1522.8h | 45,844.8 |
| 24 | 1.2.3.1 | 1.2.3.1 IDENT. AGENTES Y TIPOLOGIA | manual | 10d | 2013-05-22 | 2013-06-04 | 22SS+5d | DIRECTOR PROYECTO [50%]; SOCIÓLOGO; INGENIERO AGRONOMO [50%]; ADMINISTRATIVO [25%] | 180h | 4,920 |
| 25 | 1.2.3.2 | 1.2.3.2 ENCUESTA CON LOS AGENTES | manual | 60d | 2013-06-05 | 2013-08-27 | 24 | DIRECTOR PROYECTO [50%]; SOCIÓLOGO; INGENIERO AGRONOMO [50%]; ADMINISTRATIVO [25%] | 1080h | 29,520 |
| 26 | 1.2.3.3 | 1.2.3.3 TALLER DE PARTICIPACION AP | manual | 1d | 2013-06-19 | 2013-06-19 | 25SS+10d | SOCIÓLOGO; INGENIERO AGRONOMO [50%]; ADMINISTRATIVO [50%]; DIRECTOR PROYECTO [15%] | 17.2h | 384 |
| 27 | 1.2.3.4 | 1.2.3.4 ANALISIS PROSPECIVO "SIN" | manual | 6d | 2013-06-20 | 2013-06-27 | 26 | INGENIERO AGRONOMO [25%]; ECONOMISTA [50%]; SOCIOLOGO [25%]; INGENIERO EN MEDIOAMBIENTE [25%]; DIRECTOR PROYECTO [15%] | 67.2h | 3,168 |
| 28 | 1.2.3.5 | 1.2.3.5 INFORME DE PARTICIPACION | manual | 10d | 2013-08-28 | 2013-09-10 | 27, 25 | DIRECTOR PROYECTO [30%]; INGENIERO AGRONOMO [25%]; ECONOMISTA [50%]; SOCIOLOGO [25%]; INGENIERO EN MEDIOAMBIENTE [25%]; ADMINISTRATIVO [50%] | 164h | 7,200 |
| 29 | 1.2.3.6 | 1.2.3.6 PRESENTACION Y VAL. CONCLUSIONES | manual | 2d | 2013-09-11 | 2013-09-12 | 28 | DIRECTOR PROYECTO [25%]; INGENIERO AGRONOMO [10%]; ECONOMISTA [20%]; SOCIOLOGO [10%]; ADMINISTRATIVO [25%] | 14.4h | 652.8 |
| 30 | 1.2.4 | 1.2.4 CONCLUSIONES Y DOC Nº2 | manual | 1d | 2013-09-13 | 2013-09-13 | 29 | DIRECTOR PROYECTO [50%]; INGENIERO AGRONOMO [25%]; ADMINISTRATIVO; ECONOMISTA [50%]; INGENIERO EN MEDIOAMBIENTE [20%] | 19.6h | 828 |
| 31 | 1.2.5 | 1.2.5 DOC Nº2 REVISION PROMOTOR | manual | 1d | 2013-09-16 | 2013-09-16 | 29, 30 |  |  |  |

| ID | WBS | Task | Type | Duration | Start | Finish | Predecessors | Resources | Work | Cost |
| --- | --- | --- | --- | --- | --- | --- | --- | --- | --- | --- |
| 32 | 1.3 | **1.3 DISEÑO DEL PROYECTO** |  | 92d | 2013-09-17 | 2014-01-22 |  |  | 1152h | 53,532 |
| 33 | 1.3.1 | 1.3.1 OBJETTIVOS Y METAS | manual | 1d | 2013-09-17 | 2013-09-17 | 31 | DIRECTOR PROYECTO; INGENIERO AGRONOMO [50%] | 12h | 672 |
| 34 | 1.3.2 | 1.3.2 ALTERNATIVAS ESTRATEGICAS | manual | 7d | 2013-09-18 | 2013-09-26 | 33 | DIRECTOR PROYECTO [50%]; INGENIERO AGRONOMO; ECONOMISTA; INGENIERO EN MEDIOAMBIENTE [50%] | 168h | 8,148 |
| 35 | 1.3.3 | 1.3.3 FORMULACION DE LOS COMPONENTTES | manual | 60d | 2013-09-27 | 2013-12-19 | 34 | INGENIERO AGRONOMO [50%]; ECONOMISTA [50%]; INGENIERO EN MEDIOAMBIENTE [50%] | 720h | 33,120 |
| 36 | 1.3.4 | 1.3.4 DISEÑO DE LA ORGANIZACIÓN | manual | 10d | 2013-12-20 | 2014-01-02 | 35 | INGENIERO AGRONOMO [50%]; ECONOMISTA [50%]; INGENIERO EN MEDIOAMBIENTE [50%] | 120h | 5,520 |
| 37 | 1.3.5 | 1.3.5 SISTEMA DE SEGUIMIENTO Y EVALUACION | manual | 7d | 2014-01-03 | 2014-01-13 | 36, 35 | INGENIERO AGRONOMO [50%]; ECONOMISTA [50%]; INGENIERO EN MEDIOAMBIENTE [50%] | 84h | 3,864 |
| 38 | 1.3.6 | 1.3.6 PRESUPUESTACION | manual | 4d | 2014-01-03 | 2014-01-08 | 35, 36 | INGENIERO AGRONOMO [50%]; ECONOMISTA [50%]; INGENIERO EN MEDIOAMBIENTE [50%] | 48h | 2,208 |
| 39 | 1.3.7 | 1.3.7 DOC Nº3 ENTREGRA PROMOTOR | milestone, manual | 0d | 2014-01-09 | 2014-01-09 | 38 | DIRECTOR PROYECTO |  |  |
| 40 | 1.3.8 | 1.3.8 DOC Nº3 REVISION PROMOTOR | manual | 10d | 2014-01-09 | 2014-01-22 | 39 |  |  |  |
| 41 | 1.4 | **1.4 EVALUACION MULTICRITERIO** |  | 15d | 2014-01-23 | 2014-02-12 |  |  | 596h | 27,700 |
| 42 | 1.4.1 | 1.4.1 EVALUACION ECONOMICO-FINANCIERA | manual | 10d | 2014-01-23 | 2014-02-05 | 40 | DIRECTOR PROYECTO [25%]; INGENIERO AGRONOMO [50%]; ECONOMISTA | 140h | 6,720 |
| 43 | 1.4.2 | 1.4.2 EVALUACION SOCIOAL Y CULTTURAL | manual | 10d | 2014-01-23 | 2014-02-05 | 40 | DIRECTOR PROYECTO [25%]; INGENIERO AGRONOMO [50%]; ECONOMISTA [15%]; SOCIOLOGO | 152h | 7,260 |
| 44 | 1.4.3 | 1.4.3 EVALUACION AMBIENTAL | manual | 10d | 2014-01-23 | 2014-02-05 | 40 | DIRECTOR PROYECTO [25%]; INGENIERO AGRONOMO [50%]; ECONOMISTA [15%]; INGENIERO EN MEDIOAMBIENTE | 152h | 7,260 |
| 45 | 1.4.4 | 1.4.4 EVALUACION DE RIESGO, SEGURIDAD Y SALUD DEL PROYECTO | manual | 10d | 2014-01-23 | 2014-02-05 | 40 | DIRECTOR PROYECTO [25%]; INGENIERO AGRONOMO [50%]; ECONOMISTA [15%]; TECNICOS DE APOYO | 152h | 6,460 |
| 46 | 1.4.5 | 1.4.5 ENTREGA DOC Nº 4 | milestone, manual | 0d | 2014-02-06 | 2014-02-06 | 45 |  |  |  |
| 47 | 1.4.6 | 1.4.6 REVISION DOC Nº4 | manual | 5d | 2014-02-06 | 2014-02-12 | 42, 43, 44 |  |  |  |
| 48 | 1.5 | **1.5 DOCUMENTACION** |  | 10d | 2014-02-13 | 2014-02-26 |  |  | 989.6h | 36,420 |
| 49 | 1.5.1 | 1.5.1 MEMORIA | manual | 6d | 2014-02-13 | 2014-02-20 | 47 | INGENIERO AGRONOMO [50%]; ECONOMISTA [25%]; DIRECTOR PROYECTO [10%]; TECNICOS DE APOYO | 88.8h | 3,660 |
| 50 | 1.5.2 | 1.5.2 ANEXOS A LA MEMORIA | manual | 10d | 2014-02-13 | 2014-02-26 | 47 | INGENIERO AGRONOMO [50%]; ECONOMISTA [25%]; DIRECTOR PROYECTO [10%]; INGENIERO EN MEDIOAMBIENTE [50%]; ADMINISTRATIVO [50%]; TECNICOS DE APOYO | 228h | 9,100 |
| 51 | 1.5.3 | 1.5.3 PLANOS | manual | 10d | 2014-02-13 | 2014-02-26 | 47 | INGENIERO AGRONOMO [50%]; ECONOMISTA [25%]; DIRECTOR PROYECTO [10%]; INGENIERO EN MEDIOAMBIENTE [50%]; ADMINISTRATIVO [50%]; TECNICOS DE APOYO; EXPERTO EN GIS | 308h | 9,100 |
| 52 | 1.5.4 | 1.5.4 PLIEGO DE CONDICIONES | manual | 3d | 2014-02-13 | 2014-02-17 | 47 | INGENIERO AGRONOMO [50%]; ECONOMISTA [25%]; DIRECTOR PROYECTO [10%]; INGENIERO EN MEDIOAMBIENTE [50%]; ADMINISTRATIVO [50%]; TECNICOS DE APOYO | 68.4h | 2,730 |
| 53 | 1.5.5 | 1.5.5 PRESUPUESTO | manual | 3d | 2014-02-13 | 2014-02-17 | 47 | ECONOMISTA [25%]; INGENIERO AGRONOMO [50%]; DIRECTOR PROYECTO [10%]; INGENIERO EN MEDIOAMBIENTE [50%]; ADMINISTRATIVO [50%]; TECNICOS DE APOYO | 68.4h | 2,730 |
| 54 | 1.5.6 | 1.5.6 ESTUDIO DE SEGURIDAD Y SALUD | manual | 10d | 2014-02-13 | 2014-02-26 | 47 | INGENIERO AGRONOMO [50%]; ECONOMISTA [25%]; DIRECTOR PROYECTO [10%]; INGENIERO EN MEDIOAMBIENTE [50%]; ADMINISTRATIVO [50%]; TECNICOS DE APOYO | 228h | 9,100 |
| 55 | 1.5.7 | 1.5.7 ENTREGA DEL PROYECTO | milestone, manual | 0d | 2014-02-27 | 2014-02-27 | 54, 49, 50, 51, 52, 53 |  |  |  |
